# Plan Consolidado OTECEL V12.0

Schedule from MS Project, 2017-07-17 to 2017-10-26, status date 2017-08-17, A marks actual dates.

## Calendars

- Standard: Mon-Fri 08:00-12:00, 13:00-17:00; Sat-Sun off.

## Resources

| Resource | Group |
| --- | --- |
| Nicolas Payares | SAS |
| Miguel Ardila | SAS |
| Eduardo Puebla | SAS |
| David Miranda | SAS |
| Edson Araujo | SAS |
| Victor Agudelo | SAS |
| Carlos Restrepo | SAS |
| Eduardo Suarez | SAS |
| Octavio Hoyos | SAS |
| OTECEL | OTECEL |
| Consultor de datos | SAS |
| Angel Choco | SAS |
| Juan E. Duque | SAS |
| Carlos Murillo | SAS |
| Rec. Integracion | SAS |

## Schedule

| ID | WBS | Task | Type | Duration | Start | Finish | Predecessors | Complete | Remaining | Total slack | Constraint | Resources | Work | Actual work | % proyectado |
| --- | --- | --- | --- | --- | --- | --- | --- | --- | --- | --- | --- | --- | --- | --- | --- |
| 1 | 1 | **OTECEL - RTDM** |  | 74d | 2017-07-17 A | 2017-10-26 |  | 16% | 61.9d | 0d |  |  | 2742h | 268h | 45% |
| 2 | 1.1 | Inicio | milestone, manual | 0d | 2017-07-17 A | 2017-07-17 A |  | 100% |  |  |  |  |  |  | 100% |
| 3 | 1.2 | **Preparación** |  | 15d | 2017-07-17 A | 2017-08-04 |  | 86% | 2.14d | 59d |  |  | 324h | 268h | 100% |
| 4 | 1.2.1 | **Doc. Analisis** |  | 9d | 2017-07-17 A | 2017-07-27 |  | 67% | 3d | 0d |  |  | 36h | 12h | 100% |
| 5 | 1.2.1.1 | Preparación Doc Analisis |  | 5d | 2017-07-17 A | 2017-07-21 A | 2 | 100% |  |  |  |  |  |  | 100% |
| 6 | 1.2.1.2 | Finalización doc. De Analisis | milestone | 0d | 2017-07-21 A | 2017-07-21 A | 5 | 100% |  |  | start no earlier than 2017-07-21 | Eduardo Puebla |  |  | 100% |
| 7 | 1.2.1.3 | Aseguramiento de Calidad Doc. Análisis |  | 1d | 2017-07-24 A | 2017-07-24 A | 6 | 100% |  |  |  | David Miranda [50%]; Juan E. Duque | 12h | 12h | 100% |
| 8 | 1.2.1.4 | Entrega doc. Analisis | milestone | 0d | 2017-07-25 A | 2017-07-25 A | 7 | 100% |  |  | start no earlier than 2017-07-25 | Eduardo Suarez |  |  | 100% |
| 9 | 1.2.1.5 | Aprobación Entrega de Analisis |  | 3d | 2017-07-25 | 2017-07-27 | 8 |  |  | 0d |  | OTECEL | 24h |  | 100% |
| 10 | 1.2.1.6 | Doc Analisis Aprobado por OTECEL | milestone | 0d | 2017-07-27 | 2017-07-27 | 9 |  |  | 0d |  | OTECEL |  |  | 100% |
| 11 | 1.2.2 | Preparación Blades Desarrollo |  | 10d | 2017-07-24 A | 2017-08-04 A |  | 100% |  |  | start no earlier than 2017-07-24 | Angel Choco | 80h | 80h | 100% |
| 12 | 1.2.3 | **Plan del Proyecto** |  | 15d | 2017-07-17 A | 2017-08-04 |  | 87% | 1.96d | 59d |  |  | 208h | 176h | 100% |
| 13 | 1.2.3.1 | Preparacion Cronograma de proyecto |  | 5d | 2017-07-17 A | 2017-07-21 A | 2 | 100% |  |  |  | Octavio Hoyos | 40h | 40h | 100% |
| 14 | 1.2.3.2 | Entrega Cronograma del Proyecto | milestone | 0d | 2017-07-21 A | 2017-07-21 A | 13 | 100% |  |  |  | Octavio Hoyos |  |  | 100% |
| 15 | 1.2.3.3 | Aprobación Cronograma del Proyecto |  | 2d | 2017-07-24 | 2017-07-25 | 14 |  |  | 0d |  | OTECEL | 16h |  | 100% |
| 16 | 1.2.3.4 | Cronograma del Proyecto Aprobado por OTECEL | milestone | 0d | 2017-07-25 | 2017-07-25 | 15 |  |  | 0d |  | OTECEL |  |  | 100% |
| 17 | 1.2.3.5 | KickOff del Proyecto |  | 1d | 2017-07-26 | 2017-07-26 | 15 |  |  | 66d |  | Octavio Hoyos; OTECEL | 16h |  | 100% |
| 18 | 1.2.3.6 | Preparación Management Plan |  | 8d | 2017-07-17 A | 2017-07-26 A | 2 | 100% |  |  |  | Carlos Murillo | 64h | 64h | 100% |
| 19 | 1.2.3.7 | Aseguramieno de Calidad Management Plan |  | 2d | 2017-07-27 A | 2017-07-28 A | 18 | 100% |  |  |  | Eduardo Suarez; Octavio Hoyos | 32h | 32h | 100% |
| 20 | 1.2.3.8 | Entrega Management Plan | milestone | 0d | 2017-07-28 A | 2017-07-28 A | 19 | 100% |  |  |  | Octavio Hoyos |  |  | 100% |
| 21 | 1.2.3.9 | Aprobación Entrega Management Plan |  | 5d | 2017-07-31 A | 2017-08-04 A | 20 | 100% |  |  |  | OTECEL | 40h | 40h | 100% |
| 22 | 1.2.3.10 | Management Plan Aprobado por OTECEL | milestone | 0d | 2017-08-04 A | 2017-08-04 A | 21 | 100% |  |  |  | OTECEL |  |  | 100% |
| 23 | 1.3 | **Frente Integración** |  | 38d | 2017-07-28 | 2017-09-19 |  |  |  | 0d |  |  | 544h |  | 41% |
| 24 | 1.3.1 | PRE-REQUISITO: Acceso remoto a las maquinas de ESP | milestone | 0d | 2017-07-28 | 2017-07-28 |  |  |  | 0d | start no earlier than 2017-07-28 | OTECEL |  |  | 100% |

Notes:
- 8: Documento que proporciona la descripción completa y clara de los requerimientos de los casos de uso detallados para el proyecto.
- 14: El documento de formalización del proyecto entre SAS y cliente con el acuerdo de lo que se va a hacer, como, cuando, donde y con quien se realizara.
- 17: Presentación del alcance y documentos del proyecto.
- 24: OTECEL, deberá proveer una maquina en sitio en la que remotamente el equipo SAS pueda tomar control remoto y acceder las maquinas donde va a instalarse la solución.

| ID | WBS | Task | Type | Duration | Start | Finish | Predecessors | Total slack | Free slack | Resources | Work | % proyectado |
| --- | --- | --- | --- | --- | --- | --- | --- | --- | --- | --- | --- | --- |
| 25 | 1.3.2 | **ESP Integration Design Phase** |  | 14d | 2017-07-28 | 2017-08-16 | 4, 16, 24 | 0d |  |  | 112h | 100% |
| 26 | 1.3.2.1 | Configuration Test for the SMSC Gateway settings for IN and OUT SMS |  | 2d | 2017-07-28 | 2017-07-31 |  | 0d |  | Nicolas Payares | 16h | 100% |
| 27 | 1.3.2.2 | Configuration Test for the SMSC interface of TIAXA, receiving IN messages |  | 2d | 2017-08-01 | 2017-08-02 | 26 | 0d |  | Nicolas Payares | 16h | 100% |
| 28 | 1.3.2.3 | Specification of Adapter-SMSC-Interface for receiving and sending SMS |  | 2d | 2017-08-03 | 2017-08-04 | 27 | 0d |  | Nicolas Payares | 16h | 100% |
| 29 | 1.3.2.4 | Specification of Adapter-TIAXA-Interface for sending SMS to shortcut |  | 2d | 2017-08-07 | 2017-08-08 | 28 | 0d |  | Nicolas Payares | 16h | 100% |
| 30 | 1.3.2.5 | Configuration test for ESP-RTDM integration |  | 1d | 2017-08-09 | 2017-08-09 | 29 | 0d |  | Nicolas Payares | 8h | 100% |
| 31 | 1.3.2.6 | Configuration test for RTDM- TIAXA integration |  | 1d | 2017-08-10 | 2017-08-10 | 30 | 0d |  | Nicolas Payares | 8h | 100% |
| 32 | 1.3.2.7 | Specification of ESP-RTDM and RTDM-TIAXA interfaces |  | 1d | 2017-08-11 | 2017-08-11 | 31 | 0d |  | Nicolas Payares | 8h | 100% |
| 33 | 1.3.2.8 | Entrega doc. Diseño Integracion | milestone | 0d | 2017-08-11 | 2017-08-11 | 32 | 0d |  | Nicolas Payares |  | 100% |
| 34 | 1.3.2.9 | Aprobación doc Diseño integracion |  | 3d | 2017-08-14 | 2017-08-16 | 33 | 0d |  | OTECEL | 24h | 100% |
| 35 | 1.3.2.10 | Doc Diseño Integracion Aprobado por OTECEL | milestone | 0d | 2017-08-16 | 2017-08-16 | 34 | 0d |  | OTECEL |  | 100% |
| 36 | 1.3.3 | **ESP Integration Construct Phase** |  | 13d | 2017-08-14 | 2017-08-30 | 25FS-3d | 0d |  |  | 184h | 31% |
| 37 | 1.3.3.1 | RTDM - TIAXA SMPP Interface |  | 3d | 2017-08-14 | 2017-08-16 |  | 0d |  | Rec. Integracion; Nicolas Payares | 48h | 100% |
| 38 | 1.3.3.2 | RTDM - SMSC SMPP Interface |  | 3d | 2017-08-17 | 2017-08-21 | 37 | 0d |  | Rec. Integracion; Nicolas Payares | 48h | 33% |
| 39 | 1.3.3.3 | SMSC SMPP - ESP Interface |  | 3d | 2017-08-22 | 2017-08-24 | 38 | 0d |  | Rec. Integracion; Nicolas Payares | 48h | 0% |
| 40 | 1.3.3.4 | ESP -RTDM |  | 1d | 2017-08-25 | 2017-08-25 | 39 | 0d |  | Rec. Integracion; Nicolas Payares | 16h | 0% |
| 41 | 1.3.3.5 | Entrega doc. Desarrollo Integracion | milestone | 0d | 2017-08-25 | 2017-08-25 | 40 | 0d |  | Rec. Integracion; Nicolas Payares |  | 0% |
| 42 | 1.3.3.6 | Aprobación doc Desarrollo integracion |  | 3d | 2017-08-28 | 2017-08-30 | 41 | 0d |  | OTECEL | 24h | 0% |
| 43 | 1.3.3.7 | Doc Desarrollo Aprobado por OTECEL | milestone | 0d | 2017-08-30 | 2017-08-30 | 42 | 0d |  | OTECEL |  | 0% |
| 44 | 1.3.4 | **ESP Integration Test Phase** |  | 17d | 2017-08-28 | 2017-09-19 | 36FS-3d | 8d |  |  | 248h | 0% |
| 45 | 1.3.4.1 | END to END tests |  | 2d | 2017-08-28 | 2017-08-29 |  | 8d | 0d | Rec. Integracion; Nicolas Payares | 32h | 0% |
| 46 | 1.3.4.2 | SMPP Adapter tests |  | 2d | 2017-08-30 | 2017-08-31 | 45 | 8d | 0d | Rec. Integracion; Nicolas Payares | 32h | 0% |
| 47 | 1.3.4.3 | TIAXA Adapter Tests |  | 2d | 2017-09-01 | 2017-09-04 | 46 | 8d | 0d | Rec. Integracion; Nicolas Payares | 32h | 0% |
| 48 | 1.3.4.4 | Performance and Integration Tests |  | 4d | 2017-09-05 | 2017-09-08 | 47 | 8d | 0d | Rec. Integracion; Nicolas Payares | 64h | 0% |
| 49 | 1.3.4.5 | Solution Monitoring and Performance |  | 4d | 2017-09-11 | 2017-09-14 | 48 | 8d | 0d | Rec. Integracion; Nicolas Payares | 64h | 0% |
| 50 | 1.3.4.6 | Entrega doc. Pruebas Integracion | milestone | 0d | 2017-09-14 | 2017-09-14 | 49 | 8d | 0d | Rec. Integracion; Nicolas Payares |  | 0% |
| 51 | 1.3.4.7 | Aprobación doc Pruebas integracion |  | 3d | 2017-09-15 | 2017-09-19 | 50 | 8d | 0d | OTECEL | 24h | 0% |
| 52 | 1.3.4.8 | Doc Pruebas Aprobado por OTECEL | milestone | 0d | 2017-09-19 | 2017-09-19 | 51 | 8d |  | OTECEL |  | 0% |

Notes:
- 33: Documento que presenta en detalle la descripción del proceso de desarrollo de interfaces de captación de eventos, de integración a canales, consolidación de historia de contacto, respuesta de campanas y creación de casos de uso.
- 41: Documento técnico que especifica el detalle técnico del desarrollo implementado.

| ID | WBS | Task | Type | Duration | Start | Finish | Predecessors | Total slack | Free slack | Constraint | Resources | Work | % proyectado |
| --- | --- | --- | --- | --- | --- | --- | --- | --- | --- | --- | --- | --- | --- |
| 53 | 1.4 | **Frente Campaña incentivo recarga** |  | 48d | 2017-07-31 | 2017-10-04 |  | 0d |  |  |  | 844h | 35% |
| 54 | 1.4.1 | **Generacion de informacion** |  | 0d | 2017-07-31 | 2017-07-31 | 4, 16 | 0d |  |  |  |  | 100% |
| 55 | 1.4.1.1 | PRE-REQUISITO: Flujo actualizado con la lógica de la campaña | milestone | 0d | 2017-07-31 | 2017-07-31 |  | 0d |  | start no earlier than 2017-07-31 | OTECEL |  | 100% |
| 56 | 1.4.1.2 | PRE-REQUISITO: Ejemplo con tabla de segmentacion-oferta | milestone | 0d | 2017-07-31 | 2017-07-31 | 55 | 0d |  |  | OTECEL |  | 100% |
| 57 | 1.4.1.3 | PRE-REQUISITO: Estructura mensaje SMS que se enviará | milestone | 0d | 2017-07-31 | 2017-07-31 | 56 | 0d |  |  | OTECEL |  | 100% |
| 58 | 1.4.2 | **Diseño** |  | 16d | 2017-07-31 | 2017-08-21 | 54 | 0d |  |  |  | 292h | 90% |
| 59 | 1.4.2.1 | Revision documentacion |  | 2d | 2017-07-31 | 2017-08-01 |  | 0d |  |  | David Miranda [50%]; Eduardo Puebla | 24h | 100% |
| 60 | 1.4.2.2 | Relevar campos customizados |  | 1d | 2017-08-02 | 2017-08-02 | 59 | 0d |  |  | Eduardo Puebla; OTECEL | 16h | 100% |
| 61 | 1.4.2.3 | Definir campos customizados de campaña y tratamiento |  | 1d | 2017-08-03 | 2017-08-03 | 60 | 60d |  |  | David Miranda [50%]; Eduardo Puebla | 12h | 100% |
| 62 | 1.4.2.4 | Definir logica de campaña en ESP |  | 2d | 2017-08-03 | 2017-08-04 | 60 | 0d |  |  | David Miranda [50%]; Eduardo Puebla | 24h | 100% |
| 63 | 1.4.2.5 | Definir logica de campaña en RTDM |  | 2d | 2017-08-07 | 2017-08-08 | 62 | 0d |  |  | David Miranda [50%]; Eduardo Puebla | 24h | 100% |
| 64 | 1.4.2.6 | Definir integraciones con: fuente-ESP ESP-RTDM RTDM-Canales |  | 2d | 2017-08-09 | 2017-08-10 | 63 | 0d |  |  | David Miranda [50%]; Eduardo Puebla; Nicolas Payares | 40h | 100% |
| 65 | 1.4.2.7 | Relevar campos y fuentes para construir tablón RTDM |  | 1d | 2017-08-02 | 2017-08-02 | 59 | 4d | 0d |  | Consultor de datos; OTECEL | 16h | 100% |
| 66 | 1.4.2.8 | Definir ETLs |  | 2d | 2017-08-03 | 2017-08-04 | 65 | 4d |  |  | Consultor de datos | 16h | 100% |
| 67 | 1.4.2.9 | Cierre documento de Diseño |  | 2d | 2017-08-11 | 2017-08-14 | 64, 66 | 0d |  |  | David Miranda [50%]; Eduardo Puebla; Consultor de datos | 40h | 100% |
| 68 | 1.4.2.10 | Entrega documento diseño | milestone | 0d | 2017-08-14 | 2017-08-14 | 67 | 0d |  |  |  |  | 100% |
| 69 | 1.4.2.11 | Validacion y cierre de documento |  | 2d | 2017-08-15 | 2017-08-16 | 68 | 0d |  |  | David Miranda [50%]; Eduardo Puebla; Consultor de datos; OTECEL | 56h | 100% |
| 70 | 1.4.2.12 | Entrega doc. Diseño RTDM & ESP | milestone | 0d | 2017-08-16 | 2017-08-16 | 69 | 0d |  |  | David Miranda [50%]; Eduardo Puebla; Consultor de datos; OTECEL |  | 100% |
| 71 | 1.4.2.13 | Aprobación doc Diseño RTDM & ESP |  | 3d | 2017-08-17 | 2017-08-21 | 70 | 48d | 0d |  | OTECEL | 24h | 33% |
| 72 | 1.4.2.14 | Doc Diseño RTDM & ESP Aprobado por OTECEL | milestone | 0d | 2017-08-21 | 2017-08-21 | 71 | 48d | 0d |  | OTECEL |  | 0% |
| 73 | 1.4.2.15 | Cierre diseño | milestone | 0d | 2017-08-21 | 2017-08-21 | 72 | 48d |  |  |  |  | 0% |
| 74 | 1.4.3 | **Implementacion** |  | 37d | 2017-08-15 | 2017-10-04 | 68 | 3d |  |  |  | 552h | 16% |
| 75 | 1.4.3.1 | Creación CDM RTDM y nuevas tablas |  | 1d | 2017-08-15 | 2017-08-15 |  | 3d | 0d |  | David Miranda [50%]; Eduardo Puebla | 12h | 100% |
| 76 | 1.4.3.2 | Construcción ESP |  | 5d | 2017-08-16 | 2017-08-22 | 75 | 3d |  |  | David Miranda [50%]; Eduardo Puebla | 60h | 40% |
| 77 | 1.4.3.3 | Construccion Integracion Fuente-ESP ESP-RTDM RTDM-Canales |  | 5d | 2017-08-15 | 2017-08-21 |  | 4d |  |  | Nicolas Payares | 40h | 60% |
| 78 | 1.4.3.4 | ETL para tabla de segmentos-oferta y posible tabla de catálogo si es que es necesario |  | 3d | 2017-08-15 | 2017-08-17 |  | 6d | 0d |  | Consultor de datos | 24h | 100% |
| 79 | 1.4.3.5 | ETL creación tablón RTDM. No se usará en esta campaña pero sí es necesario desarrollarlo |  | 15d | 2017-08-18 | 2017-09-07 | 78 | 35d |  |  | Consultor de datos | 120h | 0% |
| 80 | 1.4.3.6 | Construccion Campaña: Flujo + SAS Process (groovy) |  | 13d | 2017-08-28 | 2017-09-13 | 76, 77, 78, 36FS-3d | 0d |  |  |  |  | 0% |
| 81 | 1.4.3.7 | Pruebas failover Adaptadores - ESP |  | 4d | 2017-09-14 | 2017-09-19 | 80 | 0d |  |  | David Miranda [50%]; Eduardo Puebla; Nicolas Payares | 80h | 0% |
| 82 | 1.4.3.8 | Pruebas alpha |  | 4d | 2017-09-20 | 2017-09-25 | 81 | 0d |  |  | David Miranda [50%]; Eduardo Puebla; Nicolas Payares | 80h | 0% |
| 83 | 1.4.3.9 | Pruebas Beta |  | 4d | 2017-09-26 | 2017-09-29 | 82 | 0d |  |  | David Miranda [50%]; Eduardo Puebla; Nicolas Payares; OTECEL | 112h | 0% |
| 84 | 1.4.3.10 | Aceptacion de pruebas | milestone | 0d | 2017-09-29 | 2017-09-29 | 83 | 0d |  |  | OTECEL |  | 0% |
| 85 | 1.4.3.11 | Entrega doc. Desarrollo & Pruebas RTDM & ESP | milestone | 0d | 2017-09-29 | 2017-09-29 | 84 | 16d | 0d |  | David Miranda |  | 0% |
| 86 | 1.4.3.12 | Aprobación doc Desarrollo & Pruebas RTDM & ESP |  | 3d | 2017-10-02 | 2017-10-04 | 85 | 16d | 0d |  | OTECEL | 24h | 0% |
| 87 | 1.4.3.13 | Doc Desarrollo & Pruebas Aprobado por OTECEL | milestone | 0d | 2017-10-04 | 2017-10-04 | 86 | 16d |  |  | OTECEL |  | 0% |

Notes:
- 55: i. Flujo actualizado con la lógica de la campaña. Indicar vigencia de la oferta, frecuencia para entrega de la oferta, etc.
- 56: ii. Ejemplo con tabla de segmentacion-oferta que se utilizará en RTDM y lógica para asignar la oferta.
- 57: iii. Detallar mensaje SMS que se enviará, para poder validar que tenemos la información para construirlo.
- 75: Definicion de campaña / Definicion de tratamiento / Definicion de contexto de negocio
- 85: Realizar la construcción acorde con lo especificado en el documento de diseño aprobado por Otecel. / Documento con la evidencia de ejecución de pruebas, conforme al plan de pruebas establecido por SAS. / Pruebas Unitarias de la implementación.

| ID | WBS | Task | Type | Duration | Start | Finish | Predecessors | Total slack | Free slack | Constraint | Resources | Work | % proyectado |
| --- | --- | --- | --- | --- | --- | --- | --- | --- | --- | --- | --- | --- | --- |
| 88 | 1.5 | **Frente Instalación RTDM & ESP** |  | 26.12d | 2017-08-09 | 2017-09-14 |  | 0d |  |  |  | 266h | 27% |
| 89 | 1.5.1 | PRE-REQUISITO: Entrega Servidores | milestone | 0d | 2017-08-09 | 2017-08-09 |  | 0d |  | start no earlier than 2017-08-09 | OTECEL |  | 100% |
| 90 | 1.5.2 | PRE-REQUISITO: Configuración VPN | milestone | 0d | 2017-08-09 | 2017-08-09 |  | 0d |  | start no earlier than 2017-08-09 | OTECEL |  | 100% |
| 91 | 1.5.3 | **Preparación** |  | 1.75d | 2017-08-09 | 2017-08-10 | 89, 90 | 16.88d | 0d |  |  | 26h | 100% |
| 92 | 1.5.3.1 | Entrega de servidores |  | 2h | 2017-08-09 | 2017-08-09 |  | 16.88d | 0d |  | OTECEL | 2h | 100% |
| 93 | 1.5.3.2 | Validación y corrección de pre-requisitos |  | 1d | 2017-08-09 | 2017-08-10 | 92 | 16.88d | 0d |  | Angel Choco; OTECEL | 16h | 100% |
| 94 | 1.5.3.3 | Entrega de certificados (si aplica) |  | 2h | 2017-08-10 | 2017-08-10 | 93 | 16.88d | 0d |  | Angel Choco; OTECEL | 4h | 100% |
| 95 | 1.5.3.4 | Copia del DEPOT a los servidores |  | 2h | 2017-08-10 | 2017-08-10 | 94 | 16.88d |  |  | Angel Choco; OTECEL | 4h | 100% |
| 96 | 1.5.4 | **Instalación de binarios y parches** |  | 1.88d | 2017-08-10 | 2017-08-14 | 91 | 16.88d | 0d |  |  | 15h | 100% |
| 97 | 1.5.4.1 | Instalación de Metatos |  | 1h | 2017-08-10 | 2017-08-10 |  | 16.88d | 0d |  | Angel Choco | 1h | 100% |
| 98 | 1.5.4.2 | Instalación de Compute |  | 1h | 2017-08-10 | 2017-08-10 | 97 | 16.88d | 0d |  | Angel Choco | 1h | 100% |
| 99 | 1.5.4.3 | Instalación de Mid Tier |  | 1h | 2017-08-11 | 2017-08-11 | 98 | 16.88d | 0d |  | Angel Choco | 1h | 100% |
| 100 | 1.5.4.4 | Instalación de RTDM |  | 1h | 2017-08-11 | 2017-08-11 | 99 | 16.88d | 0d |  | Angel Choco | 1h | 100% |
| 101 | 1.5.4.5 | Instalación de ESP |  | 3h | 2017-08-11 | 2017-08-11 | 100 | 16.88d | 0d |  | Angel Choco | 3h | 100% |
| 102 | 1.5.4.6 | Descarga de Parches |  | 4h | 2017-08-11 | 2017-08-14 | 101 | 16.88d | 0d |  | Angel Choco | 4h | 100% |
| 103 | 1.5.4.7 | Instalación de Parches |  | 4h | 2017-08-14 | 2017-08-14 | 102 | 16.88d |  |  | Angel Choco | 4h | 100% |
| 104 | 1.5.5 | **Configuración** |  | 5.75d | 2017-08-14 | 2017-08-22 | 96 | 16.88d | 0d |  |  | 46h | 59% |
| 105 | 1.5.5.1 | Configuración de Metatos |  | 2h | 2017-08-14 | 2017-08-14 |  | 16.88d | 0d |  | Angel Choco | 2h | 100% |
| 106 | 1.5.5.2 | Configuración de Compute |  | 4h | 2017-08-14 | 2017-08-15 | 105 | 16.88d | 0d |  | Angel Choco | 4h | 100% |
| 107 | 1.5.5.3 | Configuración de Mid Tier |  | 16h | 2017-08-15 | 2017-08-17 | 106 | 16.88d | 0d |  | Angel Choco | 16h | 100% |
| 108 | 1.5.5.4 | Configuración de RTDM |  | 8h | 2017-08-17 | 2017-08-18 | 107 | 16.88d | 0d |  | Angel Choco | 8h | 63% |
| 109 | 1.5.5.5 | Configuración de ESP |  | 16h | 2017-08-18 | 2017-08-22 | 108 | 16.88d |  |  | Angel Choco | 16h | 0% |
| 110 | 1.5.6 | **Post Configuración** |  | 4.5d | 2017-08-22 | 2017-08-28 | 104 | 16.88d | 0d |  |  | 36h | 0% |
| 111 | 1.5.6.1 | Configuración Access To Oracle |  | 4h | 2017-08-22 | 2017-08-22 |  | 16.88d | 0d |  | Angel Choco | 4h | 0% |
| 112 | 1.5.6.2 | Configuración RTDM Engine (2x) |  | 16h | 2017-08-22 | 2017-08-24 | 111 | 16.88d | 0d |  | Angel Choco | 16h | 0% |
| 113 | 1.5.6.3 | Configuración Federation Server (2x) |  | 8h | 2017-08-24 | 2017-08-25 | 112 | 16.88d | 0d |  | Angel Choco | 8h | 0% |
| 114 | 1.5.6.4 | Configuración ESP |  | 8h | 2017-08-25 | 2017-08-28 | 113 | 16.88d |  |  | Angel Choco | 8h | 0% |

Notes:
- 90: OTECEL deberá proveer un acceso VPN a través del cual el equipo SAS pueda hacer la instalación y configuración RTDM & ESP.

| ID | WBS | Task | Type | Duration | Start | Finish | Predecessors | Total slack | Free slack | Constraint | Resources | Work | % proyectado |
| --- | --- | --- | --- | --- | --- | --- | --- | --- | --- | --- | --- | --- | --- |
| 115 | 1.5.7 | **Validación** |  | 7.25d | 2017-08-28 | 2017-09-07 | 110 | 16.88d | 0d |  |  | 103h | 0% |
| 116 | 1.5.7.1 | Validación básica |  | 4h | 2017-08-28 | 2017-08-29 |  | 16.88d | 0d |  | Angel Choco | 4h | 0% |
| 117 | 1.5.7.2 | Validación de Visual Analytics |  | 4h | 2017-08-29 | 2017-08-29 | 116 | 16.88d | 0d |  | Angel Choco | 4h | 0% |
| 118 | 1.5.7.3 | Construcción y ejecución del caso end-to-end |  | 30h | 2017-08-29 | 2017-09-04 | 117 | 16.88d | 0d |  | Angel Choco; David Miranda [50%]; Eduardo Puebla | 75h | 0% |
| 119 | 1.5.7.4 | Correcciones |  | 20h | 2017-09-04 | 2017-09-07 | 118 | 16.88d |  |  | Angel Choco | 20h | 0% |
| 120 | 1.5.8 | **Documentación** |  | 5d | 2017-09-07 | 2017-09-14 | 115 | 30.88d |  |  |  | 40h | 0% |
| 121 | 1.5.8.1 | Documento Instalación |  | 16h | 2017-09-07 | 2017-09-11 |  | 30.88d | 0d |  | Angel Choco | 16h | 0% |
| 122 | 1.5.8.2 | Entrega doc. Instalación | milestone | 0d | 2017-09-11 | 2017-09-11 | 121 | 30.88d | 0d |  | Angel Choco |  | 0% |
| 123 | 1.5.8.3 | Aprobación doc Instalación |  | 3d | 2017-09-11 | 2017-09-14 | 122 | 30.88d | 0d |  | OTECEL | 24h | 0% |
| 124 | 1.5.8.4 | Doc Instalación Aprobado por OTECEL | milestone | 0d | 2017-09-14 | 2017-09-14 | 123 | 30.88d |  |  | OTECEL |  | 0% |
| 125 | 1.6 | **Frente Educacion** |  | 24d | 2017-08-14 | 2017-09-14 |  | 30d |  |  |  | 88h | 36% |
| 126 | 1.6.1 | VA |  | 4d | 2017-08-14 | 2017-08-17 |  | 50d |  | start no earlier than 2017-08-14 | OTECEL | 32h | 100% |
| 127 | 1.6.2 | RTDM |  | 3d | 2017-09-04 | 2017-09-06 |  | 36d |  | start no earlier than 2017-09-04 | OTECEL | 24h | 0% |
| 128 | 1.6.3 | ADMIN SAS (BOGOTA) |  | 4d | 2017-09-11 | 2017-09-14 |  | 30d |  | start no earlier than 2017-09-11 | OTECEL | 32h | 0% |
| 129 | 1.7 | **Salida a Producción** |  | 19d | 2017-10-02 | 2017-10-26 |  | 0d |  |  |  | 676h | 0% |
| 130 | 1.7.1 | **Instalación en Producción Incentivo Recarga** |  | 4d | 2017-10-02 | 2017-10-05 | 44, 84, 115 | 0d |  |  |  | 16h | 0% |
| 131 | 1.7.1.1 | Documentacion paso a produccion |  | 1d | 2017-10-02 | 2017-10-02 |  | 3d |  |  | Eduardo Puebla | 8h | 0% |
| 132 | 1.7.1.2 | Paso a Produccion |  | 1d | 2017-10-02 | 2017-10-02 |  | 0d |  |  | Eduardo Puebla | 8h | 0% |
| 133 | 1.7.1.3 | Migracion Objetos Blade a Produccion |  | 3d | 2017-10-03 | 2017-10-05 | 132 | 0d |  |  |  |  | 0% |
| 134 | 1.7.2 | **Instalación en producción - Integración** |  | 15d | 2017-10-06 | 2017-10-26 | 44, 84, 115, 130 | 0d |  |  |  | 660h | 0% |
| 135 | 1.7.2.1 | Operation in paralled of TIAXA and SAS |  | 5d | 2017-10-06 | 2017-10-12 |  | 0d |  |  | Miguel Ardila; Nicolas Payares; Angel Choco; David Miranda [50%]; Eduardo Puebla; OTECEL | 220h | 0% |
| 136 | 1.7.2.2 | Rumpup of SAS and shutdown of TIAXA old shortcut |  | 10d | 2017-10-13 | 2017-10-26 | 135 | 0d |  |  | Miguel Ardila; Nicolas Payares; Angel Choco; David Miranda [50%]; Eduardo Puebla; OTECEL | 440h | 0% |

Notes:
- 121: Entrega de documentación de la memoria técnica.
